# MPPL_msprj2013 edit TA.xml

Schedule from MS Project XML, 2012-06-27 to 2013-02-27, costs in Rp., A marks actual dates.
ASG Software Solutions

## Calendars

- Standard: Mon-Fri 08:00-12:00, 13:00-17:00; Sat-Sun off. Exceptions (off unless hours are given): 2013-01-26 08:00-12:00, 13:00-17:00.

## Resources

| Resource | Rate |
| --- | --- |
| Project Director | 100000 |
| Project Manager | 80000 |
| Web Developer | 55000 |
| Application Developer | 55000 |
| Application Artist | 55000 |

## Schedule

| ID | WBS | Task | Type | Duration | Start | Finish | Predecessors | Complete | Remaining | Actual finish | Baseline start | Baseline finish | Baseline duration | Total slack | Free slack | Constraint | Resources | Work | Actual work | Cost | Baseline cost | Actual cost | Text7 |
| --- | --- | --- | --- | --- | --- | --- | --- | --- | --- | --- | --- | --- | --- | --- | --- | --- | --- | --- | --- | --- | --- | --- | --- |
| 1 | 1 | **Inisiasi** |  | 0.88d | 2012-06-27 A | 2012-06-28 |  | 100% |  | 2012-06-27 | 2012-06-27 | 2012-07-04 | 6d |  |  |  |  |  |  |  | 4,000,000 |  |  |
| 2 | 1.1 | Menentukan Manajer Proyek | milestone | 0d | 2012-06-27 A | 2012-06-27 A |  | 100% |  |  | 2012-06-27 | 2012-06-27 | 1d |  |  | finish no earlier than 2012-06-27 | Project Director |  |  |  | 800,000 |  |  |
| 3 | 1.2 | Menyiapkan kontrak tim | milestone | 0d | 2012-06-27 A | 2012-06-27 A | 2 | 100% |  |  | 2012-06-28 | 2012-06-28 | 1d |  |  |  | Project Manager |  |  |  | 640,000 |  |  |
| 4 | 1.3 | Melakukan pertemuan kickoff proyek | milestone | 0d | 2012-06-27 A | 2012-06-27 A | 3 | 100% |  |  | 2012-06-29 | 2012-06-29 | 1d |  |  |  | Project Manager |  |  |  | 640,000 |  |  |
| 5 | 1.4 | Identifikasi stakeholder kunci | milestone | 0d | 2012-06-27 A | 2012-06-27 A | 4 | 100% |  |  | 2012-07-02 | 2012-07-02 | 1d |  |  |  | Project Manager |  |  |  | 640,000 |  |  |
| 6 | 1.5 | Menyiapkan business case | milestone | 0d | 2012-06-27 A | 2012-06-27 A | 5 | 100% |  |  | 2012-07-03 | 2012-07-03 | 1d |  |  |  | Project Manager |  |  |  | 640,000 |  |  |
| 7 | 1.6 | Menyiapkan project charter | milestone | 0d | 2012-06-27 A | 2012-06-27 A | 6 | 100% |  |  | 2012-07-04 | 2012-07-04 | 1d |  |  |  | Project Manager |  |  |  | 640,000 |  |  |
| 8 | 2 | **Perencanaan** |  | 4d | 2012-06-28 A | 2012-07-09 | 1 | 88% | 0.84d |  | 2012-07-05 | 2012-07-19 | 11d |  |  |  |  | 76h | 68h | 6,080,000 | 7,040,000 | 5,440,000 |  |
| 9 | 2.1 | Menyiapkan scope statement | milestone | 0d | 2012-06-28 A | 2012-06-28 A | 6 | 100% |  |  | 2012-07-05 | 2012-07-06 | 2d |  |  |  | Project Manager |  |  |  | 1,280,000 |  |  |
| 10 | 2.2 | Menyiapkan WBS |  | 1d | 2012-06-28 A | 2012-06-29 | 9 |  | 1d |  | 2012-07-09 | 2012-07-10 | 2d | 6d |  |  | Project Manager | 8h |  | 640,000 | 1,280,000 |  |  |
| 11 | 2.3 | **Menyiapkan jadwal dan cost baseline** |  | 2.12d | 2012-06-30 A | 2012-07-04 A | 10 | 100% |  |  | 2012-07-11 | 2012-07-12 | 2d |  |  |  | Project Manager | 68h | 68h | 5,440,000 | 1,280,000 | 5,440,000 |  |
| 12 | 2.3.1 | Menentukan sumber daya untuk pekerjaan |  | 2.12d | 2012-06-30 A | 2012-07-04 A | 10 | 100% |  |  | 2012-07-13 | 2012-07-13 | 1d |  |  |  | Project Manager | 17h | 17h | 1,360,000 | 640,000 | 1,360,000 |  |
| 13 | 2.3.2 | Menentukan waktu pekerjaan |  | 2.12d | 2012-06-30 A | 2012-07-04 A | 12 | 100% |  |  | 2012-07-16 | 2012-07-16 | 1d |  |  |  | Project Manager | 17h | 17h | 1,360,000 | 640,000 | 1,360,000 |  |
| 14 | 2.4.1 | Menentukan kebergantungan pekerjaan |  | 2.12d | 2012-06-30 A | 2012-07-04 A | 13 | 100% |  |  | 2012-07-17 | 2012-07-17 | 1d |  |  |  | Project Manager | 17h | 17h | 1,360,000 | 640,000 | 1,360,000 |  |
| 15 | 2.3.4 | Membuat draft Gantt Chart | milestone | 0d | 2012-06-30 A | 2012-07-02 A | 14 | 100% |  |  | 2012-07-18 | 2012-07-18 | 1d |  |  |  | Project Manager |  |  |  | 640,000 |  |  |
| 16 | 2.3.5 | Review dan finalisasi Gantt Chart | milestone | 0d | 2012-06-30 A | 2012-07-02 A | 15 | 100% |  |  | 2012-07-19 | 2012-07-19 | 1d |  |  |  | Project Manager |  |  |  | 640,000 |  |  |
| 17 | 2.4 | Identifikasi, diskusi, dan membuat prioritas risiko | manual | 1d | 2012-06-30 A | 2012-07-02 A | 11 | 100% |  |  | 2012-07-13 | 2012-07-19 | 5d |  |  |  |  |  |  |  | 3,200,000 |  |  |
| 18 | 3 | **Eksekusi** |  | 150.88d | 2012-07-23 | 2013-02-15 | 38 |  |  |  | 2012-07-20 | 2013-01-18 | 131d | 2d |  |  |  | 2258h |  | 137,835,000 | 142,160,000 |  |  |
| 19 | 3.1 | Survey dan Requirement gathering dari pihak Senayan City |  | 10d | 2012-08-07 | 2012-09-12 |  |  |  |  | 2012-07-20 | 2012-08-02 | 10d | 121.88d |  | finish no earlier than 2012-08-02 | Project Manager | 80h |  | 6,400,000 | 6,400,000 |  |  |
| 20 | 3.2 | Masukan pengguna (customer Senayan City) |  | 10d | 2012-07-23 | 2012-08-06 |  |  |  |  | 2012-07-20 | 2012-08-02 | 10d | 2d | 0d | finish no earlier than 2012-08-02 | Project Manager | 80h |  | 6,400,000 | 6,400,000 |  |  |
| 21 | 3.3 | **Content Aplikasi** |  | 0d | 2012-08-03 | 2012-08-09 | 39 |  |  |  | 2012-08-03 | 2012-08-08 | 4d |  |  |  |  | 32h |  | 2,560,000 | 2,560,000 |  |  |
| 22 | 3.3.1 | Template dan tools | milestone | 0d? | 2012-08-03 | 2012-08-03 |  |  |  |  | 2012-08-03 | 2012-08-03 | 1d? | 4d | 0d |  | Project Manager | 8h |  | 640,000 | 640,000 |  | Data Management Reports |
| 23 | 3.3.2 | Artikel | milestone | 0d? | 2012-08-03 | 2012-08-03 | 22 |  |  |  | 2012-08-06 | 2012-08-06 | 1d? | 4d | 0d |  | Project Manager | 8h |  | 640,000 | 640,000 |  | Configuration Management Reports |
| 24 | 3.3.3 | Link | milestone | 0d? | 2012-08-03 | 2012-08-03 | 23 |  |  |  | 2012-08-07 | 2012-08-07 | 1d? | 4d | 0d |  | Project Manager | 8h |  | 640,000 | 640,000 |  | Project Summary |
| 25 | 3.3.4 | Fitur tambahan dan user requets | milestone | 0d? | 2012-08-03 | 2012-08-03 | 24 |  |  |  | 2012-08-08 | 2012-08-08 | 1d? | 4d |  |  | Project Manager | 8h |  | 640,000 | 640,000 |  | General Office Support |
| 26 | 3.4 | Desain pengerjaan aplikasi |  | 15d | 2012-08-09 | 2012-08-30 | 21 |  |  |  | 2012-08-09 | 2012-08-29 | 15d | 8.88d | 0.88d | finish no earlier than 2012-08-29 | Project Manager | 120h |  | 9,600,000 | 9,600,000 |  |  |

Notes:
- 1: Text1: VPEND<VP ID="0_134424" TYP="0" />
- 8: Text1: VPEND<VP ID="0_134450" TYP="0" />
- 9: Text1: VPEND<VP ID="0_80808" TYP="0" />
- 18: Text1: VPEND<VP ID="0_134633" TYP="0" />
- 19: Text1: VPEND<VP ID="0_168469" TYP="0" />
- 21: Text1: VPEND<VP ID="0_17233" TYP="0"><VP ID="0_107014" TYP="3" /></VP>
- 22: Text1: VPEND<VP ID="0_17235" TYP="0"><VP ID="0_18350" TYP="2"><VP ID="0_21553" TYP="3" /></VP><VP ID="0_17303" TYP="1" /></VP>
- 23: Text1: VPEND<VP ID="0_17236" TYP="0"><VP ID="0_88295" TYP="3" /><VP ID="0_88300" TYP="3" /><VP ID="0_18351" TYP="2" /><VP ID="0_17303" TYP="1" /></VP>
- 24: Text1: VPEND<VP ID="0_17238" TYP="0"><VP ID="0_17271" TYP="2"><VP ID="0_142020" TYP="3" /></VP><VP ID="0_17303" TYP="1" /></VP>
- 25: Text1: VPEND<VP ID="0_17251" TYP="0"><VP ID="0_142022" TYP="2" /><VP ID="0_17303" TYP="1" /></VP>

| ID | WBS | Task | Duration | Start | Finish | Predecessors | Complete | Remaining | Baseline start | Baseline finish | Baseline duration | Total slack | Free slack | Constraint | Resources | Work | Actual work | Cost | Baseline cost | Actual cost | Text7 |
| --- | --- | --- | --- | --- | --- | --- | --- | --- | --- | --- | --- | --- | --- | --- | --- | --- | --- | --- | --- | --- | --- |
| 27 | 3.5 | **Konstruksi aplikasi dan sistem menggunakan metode iterative** | 101d | 2012-09-03 | 2013-01-21 | 40 |  |  | 2012-08-30 | 2012-12-20 | 81d | 0d |  |  |  | 1624h |  | 89,320,000 | 89,320,000 |  |  |
| 28 | 3.5.1 | Implementasi tampilan dan animasi aplikasi front-end | 41d | 2012-09-03 | 2012-10-29 |  |  |  | 2012-08-30 | 2012-10-25 | 41d | 8d | 0d | finish no earlier than 2012-10-25 | Application Artist; Application Developer | 656h |  | 36,080,000 | 36,080,000 |  | Training Needs Analysis |
| 29 | 3.5.2 | Implementasi CMS dan Web Service | 41d | 2012-09-03 | 2012-10-29 |  |  |  | 2012-08-30 | 2012-10-25 | 41d | 8d | 0d | finish no earlier than 2012-10-25 | Web Developer | 328h |  | 18,040,000 | 18,040,000 |  | Recognition Programs |
| 30 | 3.5.3 | Integrasi aplikasi front-end dengan web service | 10d | 2012-10-31 | 2012-11-13 | 41, 42 |  |  | 2012-10-26 | 2012-11-08 | 10d | 28d |  | finish no earlier than 2012-11-08 | Application Developer; Web Developer | 160h |  | 8,800,000 | 8,800,000 |  |  |
| 31 | 3.5.4 | Implementasi sharing email dan sosial media | 20d | 2012-11-14 | 2012-12-11 | 41, 42 |  |  | 2012-10-26 | 2012-11-22 | 20d | 8d |  | finish no earlier than 2012-11-22 | Application Developer | 160h |  | 8,800,000 | 8,800,000 |  |  |
| 32 | 3.5.5 | Integrasi dengan CRM Senayan City | 20d | 2012-12-25 | 2013-01-21 | 43 |  |  | 2012-11-23 | 2012-12-20 | 20d | 0d |  | finish no earlier than 2012-12-20 | Web Developer; Application Developer | 320h |  | 17,600,000 | 17,600,000 |  |  |
| 33 | 3.6 | Pengujian akhir aplikasi dan sistem | 5d | 2013-01-22 | 2013-01-26 | 27 |  |  | 2012-12-21 | 2012-12-27 | 5d | 0d |  | finish no earlier than 2012-12-27 | Project Manager; Application Artist; Application Developer; Project Director; Web Developer | 202h |  | 13,955,000 | 13,800,000 |  |  |
| 34 | 3.7 | Promosi aplikasi dan sistem | 5d | 2013-01-28 | 2013-02-01 | 33 |  |  | 2012-12-28 | 2013-01-03 | 5d | 0d |  | finish no earlier than 2013-01-03 | Project Manager | 40h |  | 3,200,000 | 3,200,000 |  |  |
| 35 | 3.8 | Roll-out aplikasi dan sistem | 5d | 2013-02-04 | 2013-02-08 | 34 |  |  | 2013-01-04 | 2013-01-10 | 5d | 0d |  | finish no earlier than 2013-01-10 | Project Manager | 40h |  | 3,200,000 | 3,200,000 |  |  |
| 36 | 3.9 | Pengukuran manfaat proyek | 5d | 2013-02-11 | 2013-02-15 | 35 |  |  | 2013-01-11 | 2013-01-17 | 5d | 0d |  | finish no earlier than 2013-01-17 | Project Manager | 40h |  | 3,200,000 | 3,200,000 |  |  |
| 37 | 4 | **Controlling** | 152.88d | 2012-07-20 A | 2013-02-18 |  | 14% | 131.04d | 2012-07-20 | 2013-01-18 | 131d | 0d |  |  |  | 56h | 8h | 4,480,000 | 4,480,000 | 640,000 |  |
| 38 | 4.1 | Milestone 1 : Review Perencanaan Awal | 1d | 2012-07-20 A | 2012-07-23 A | 17 | 100% |  | 2012-07-20 | 2012-07-20 | 1d |  |  | finish no earlier than 2012-07-20 | Project Manager | 8h | 8h | 640,000 | 640,000 | 640,000 |  |
| 39 | 4.1 | Milestone 2 : Review Survey dan Masukkan Pengguna | 1d | 2012-08-06 | 2012-08-07 | 20 |  |  | 2012-08-03 | 2012-08-06 | 1d | 2d | 0d | finish no earlier than 2012-08-06 | Project Manager | 8h |  | 640,000 | 640,000 |  |  |
| 40 | 4.1 | Milestone 3 : Review Desain Aplikasi | 1d | 2012-08-31 | 2012-08-31 | 26 |  |  | 2012-08-30 | 2012-08-31 | 1d | 8d | 0d | finish no earlier than 2012-08-31 | Project Manager | 8h |  | 640,000 | 640,000 |  |  |
| 41 | 4.1 | Milestone 4 : Review Tampilan | 1d | 2012-10-30 | 2012-10-30 | 28, 29 |  |  | 2012-09-20 | 2012-09-21 | 1d | 8d | 0d | finish no earlier than 2012-09-21 | Project Manager | 8h |  | 640,000 | 640,000 |  |  |
| 42 | 4.1 | Milestone 5 : Review Tampilan dan CMS | 1d | 2012-10-30 | 2012-10-30 | 28, 29 |  |  | 2012-10-26 | 2012-10-29 | 1d | 8d | 0d | finish no earlier than 2012-10-29 | Project Manager | 8h |  | 640,000 | 640,000 |  |  |
| 43 | 4.1 | Milestone 6 : Review Fungsionalitas Aplikasi | 1d | 2012-12-24 | 2012-12-24 | 30, 31 |  |  | 2012-12-21 | 2012-12-24 | 1d | 0d |  | finish no earlier than 2012-12-24 | Project Manager | 8h |  | 640,000 | 640,000 |  |  |
| 44 | 4.1 | Milestone 7 : Review Proses Implementasi | 1d | 2013-02-18 | 2013-02-18 | 36 |  |  | 2013-01-18 | 2013-01-18 | 1d | 0d |  | finish no earlier than 2013-01-18 | Project Manager | 8h |  | 640,000 | 640,000 |  |  |
| 45 | 5 | **Closing** | 7d | 2013-02-19 | 2013-02-27 |  |  |  | 2013-01-21 | 2013-01-28 | 7d | 0d |  |  |  | 56h |  | 4,480,000 | 4,480,000 |  |  |
| 46 | 5.1 | Menyiapkan laporan final proyek | 3d | 2013-02-19 | 2013-02-21 | 44 |  |  | 2013-01-21 | 2013-01-23 | 3d | 0d |  | finish no earlier than 2013-01-23 | Project Manager | 24h |  | 1,920,000 | 1,920,000 |  |  |
| 47 | 5.2 | Menyiapkan presentasi final proyek | 3d | 2013-02-22 | 2013-02-26 | 46 |  |  | 2013-01-24 | 2013-01-26 | 3d | 0d |  | finish no earlier than 2013-01-26 | Project Manager | 24h |  | 1,920,000 | 1,920,000 |  |  |
| 48 | 5.3 | Lessons learned | 1d | 2013-02-27 | 2013-02-27 | 47 |  |  | 2013-01-28 | 2013-01-28 | 1d | 0d |  | finish no earlier than 2013-01-28 | Project Manager | 8h |  | 640,000 | 640,000 |  | Contract Files, Subcontractor Payments |

Notes:
- 27: Text1: VPEND<VP ID="0_80811" TYP="0"><VP ID="0_107010" TYP="3" /><VP ID="0_88301" TYP="3" /></VP>
- 28: Text1: VPEND<VP ID="0_17219" TYP="0"><VP ID="0_88298" TYP="3" /><VP ID="0_81546" TYP="2"><VP ID="0_85299" TYP="3" /></VP><VP ID="0_76644" TYP="2" /><VP ID="0_17303" TYP="1" /></VP>
- 29: Text1: VPEND<VP ID="0_17230" TYP="0"><VP ID="0_78444" TYP="2" /><VP ID="0_88000" TYP="2"><VP ID="0_144499" TYP="2" /></VP><VP ID="0_17301" TYP="1" /></VP>
- 33: Text1: VPEND<VP ID="0_80813" TYP="0"><VP ID="0_107013" TYP="3" /><VP ID="0_88300" TYP="3" /><VP ID="0_88305" TYP="3" /></VP>
- 45: Text1: VPEND<VP ID="0_129436" TYP="0" />
- 46: Text1: VPEND<VP ID="0_81855" TYP="0"><VP ID="0_107335" TYP="3" /></VP>
- 47: Text1: VPEND<VP ID="0_168529" TYP="0" />
- 48: Text1: VPEND<VP ID="0_168537" TYP="0"><VP ID="0_17261" TYP="2" /><VP ID="0_92687" TYP="2" /><VP ID="0_17305" TYP="1" /></VP>
